Schedule from MS Project, 2019-05-10 to 2020-10-12.

## Calendars

- 标准: Mon-Fri 08:00-12:00, 13:00-17:00; Sat-Sun off. Exceptions (off unless hours are given): 2019-02-25 to 2020-07-08 08:00-12:00, 13:00-17:00 (recurring).

## Schedule

| ID | WBS | Task | Duration | Start | Finish | Predecessors | Total slack | Free slack | Constraint |
| --- | --- | --- | --- | --- | --- | --- | --- | --- | --- |
| 1 | 1 | **金钻广场总进度计划** | 494d | 2019-05-10 | 2020-10-12 |  | 0d |  |  |
| 2 | 1.1 | **基础施工** | 93d | 2019-05-10 | 2019-08-10 |  | 248d |  |  |
| 3 | 1.1.1 | **东侧塔吊施工** | 16d | 2019-05-30 | 2019-06-14 |  | 458d |  |  |
| 4 | 1.1.1.1 | 东侧塔吊基础土方开挖 | 5d | 2019-05-30 | 2019-06-03 |  | 458d | 0d | start no earlier than 2019-05-30 |
| 5 | 1.1.1.2 | 垫层浇筑 | 2d | 2019-06-04 | 2019-06-05 | 4 | 458d | 0d | start no earlier than 2019-06-01 |
| 6 | 1.1.1.3 | 钢筋施工 | 1d | 2019-06-06 | 2019-06-06 | 5 | 458d | 0d |  |
| 7 | 1.1.1.4 | 塔吊定位及防雷接地 | 1d | 2019-06-06 | 2019-06-06 | 6FS-1d | 458d | 0d | finish no earlier than 2019-05-05 |
| 8 | 1.1.1.5 | 模板安装 | 1d | 2019-06-07 | 2019-06-07 | 7 | 458d | 0d | start no earlier than 2019-05-05 |
| 9 | 1.1.1.6 | 浇筑混凝土 | 1d | 2019-06-08 | 2019-06-08 | 8 | 458d | 0d | start no earlier than 2019-05-06 |
| 10 | 1.1.1.7 | 塔吊安装 | 2d | 2019-06-13 | 2019-06-14 | 9FS+4d | 458d |  | start no earlier than 2019-05-12 |
| 11 | 1.1.2 | **7、6区施工** | 67d | 2019-05-10 | 2019-07-15 |  | 405d |  |  |
| 12 | 1.1.2.1 | 7区土方开挖 | 7d | 2019-05-10 | 2019-05-16 |  | 466d | 0d | finish no earlier than 2019-05-16 |
| 13 | 1.1.2.2 | 垫层浇筑 | 2d | 2019-05-16 | 2019-05-17 | 12FS-1d | 466d | 0d | start no earlier than 2019-05-13 |
| 14 | 1.1.2.3 | 砖胎膜施工 | 5d | 2019-05-18 | 2019-05-22 | 13 | 466d | 0d |  |
| 15 | 1.1.2.4 | 承台回填土 | 2d | 2019-05-22 | 2019-05-23 | 14FS-1d | 466d | 3d |  |
| 16 | 1.1.2.5 | 防水施工 | 3d | 2019-05-27 | 2019-05-29 | 15 | 463d | 0d | start no earlier than 2019-05-27 |
| 17 | 1.1.2.6 | 保护层施工 | 1d | 2019-05-30 | 2019-05-30 | 16 | 463d | 0d |  |
| 18 | 1.1.2.7 | 筏板施工 | 10d | 2019-05-31 | 2019-06-09 | 17 | 463d |  |  |
| 19 | 1.1.2.8 | 水平支撑拆除 | 2d | 2019-07-04 | 2019-07-05 | 61FS+7d | 350d | 0d | start no earlier than 2019-06-04 |
| 20 | 1.1.2.9 | 负一层结构施工 | 10d | 2019-07-06 | 2019-07-15 | 19 | 350d | 1d | start no earlier than 2019-06-21 |
| 21 | 1.1.2.10 | 6区土方开挖 | 4d | 2019-05-22 | 2019-05-25 |  | 461d | 0d | finish no earlier than 2019-05-25 |
| 22 | 1.1.2.11 | 垫层浇筑 | 2d | 2019-05-25 | 2019-05-26 | 21FS-1d | 461d | 0d | start no earlier than 2019-05-17 |
| 23 | 1.1.2.12 | 砖胎膜施工及回填土 | 3d | 2019-05-27 | 2019-05-29 | 22 | 461d | 0d |  |
| 24 | 1.1.2.13 | 防水施工 | 2d | 2019-05-30 | 2019-05-31 | 23 | 461d | 0d | start no earlier than 2019-05-30 |
| 25 | 1.1.2.14 | 保护层施工 | 1d | 2019-06-01 | 2019-06-01 | 24 | 461d | 0d | start no earlier than 2019-02-11 |
| 26 | 1.1.2.15 | 筏板施工 | 10d | 2019-06-02 | 2019-06-11 | 25 | 461d |  | start no earlier than 2019-05-14 |
| 27 | 1.1.2.16 | 水平支撑拆除 | 2d | 2019-07-04 | 2019-07-05 | 61FS+7d | 350d | 0d | start no earlier than 2019-06-04 |
| 28 | 1.1.2.17 | 负一层结构施工 | 10d | 2019-07-06 | 2019-07-15 | 27 | 350d | 0d | start no earlier than 2019-06-21 |

| ID | WBS | Task | Duration | Start | Finish | Predecessors | Total slack | Free slack | Constraint |
| --- | --- | --- | --- | --- | --- | --- | --- | --- | --- |
| 29 | 1.1.3 | **1、2区** | 65d | 2019-05-16 | 2019-07-19 |  | 242d |  |  |
| 30 | 1.1.3.1 | 1区土方开挖 | 9d | 2019-05-16 | 2019-05-24 |  | 242d | 0d | finish no earlier than 2019-05-24 |
| 31 | 1.1.3.2 | 垫层浇筑 | 2d | 2019-05-25 | 2019-05-26 | 30FS-1d | 453d | 0d | start no earlier than 2019-05-25 |
| 32 | 1.1.3.3 | 砖胎膜施工 | 4d | 2019-05-27 | 2019-05-30 | 31 | 453d | 0d | finish no earlier than 2019-05-30 |
| 33 | 1.1.3.4 | 承台加固回填土 | 2d | 2019-05-31 | 2019-06-01 | 32 | 453d | 0d |  |
| 34 | 1.1.3.5 | 防水施工 | 2d | 2019-06-02 | 2019-06-03 | 33 | 453d | 0d | start no earlier than 2019-06-02 |
| 35 | 1.1.3.6 | 保护层施工 | 1d | 2019-06-04 | 2019-06-04 | 34 | 453d | 0d |  |
| 36 | 1.1.3.7 | 筏板施工 | 15d | 2019-06-05 | 2019-06-19 | 35 | 453d |  |  |
| 37 | 1.1.3.8 | 水平支撑拆除 | 3d | 2019-07-01 | 2019-07-03 | 44FS+10d | 402d | 0d | start no earlier than 2019-06-10 |
| 38 | 1.1.3.9 | 负一层结构施工 | 15d | 2019-07-04 | 2019-07-18 | 37 | 402d | 0d |  |
| 39 | 1.1.3.10 | 2区土方开挖 | 5d | 2019-05-25 | 2019-05-29 | 30 | 242d | 0d | finish no earlier than 2019-05-29 |
| 40 | 1.1.3.11 | 垫层浇筑 | 3d | 2019-05-29 | 2019-05-31 | 39FS-1d | 242d | 0d | start no earlier than 2019-05-29 |
| 41 | 1.1.3.12 | 承台加固回填土 | 3d | 2019-05-31 | 2019-06-02 | 40FS-1d | 242d | 0d |  |
| 42 | 1.1.3.13 | 防水施工 | 2d | 2019-06-03 | 2019-06-04 | 41 | 242d | 0d | start no earlier than 2019-05-31 |
| 43 | 1.1.3.14 | 保护层施工 | 1d | 2019-06-05 | 2019-06-05 | 42 | 242d | 0d |  |
| 44 | 1.1.3.15 | 筏板施工 | 15d | 2019-06-06 | 2019-06-20 | 43 | 242d | 0d |  |
| 45 | 1.1.3.16 | 水平支撑拆除 | 4d | 2019-07-01 | 2019-07-04 | 44FS+10d | 242d | 0d | start no earlier than 2019-06-10 |
| 46 | 1.1.3.17 | 负一层结构施工 | 15d | 2019-07-05 | 2019-07-19 | 45 | 242d | 0d |  |
| 47 | 1.1.4 | **8、9区施工** | 53d | 2019-05-28 | 2019-07-19 |  | 352d |  |  |
| 48 | 1.1.4.1 | 8区土方开挖 | 5d | 2019-05-28 | 2019-06-01 |  | 448d | 0d | start no earlier than 2019-05-28 |
| 49 | 1.1.4.2 | 垫层浇筑 | 3d | 2019-06-01 | 2019-06-03 | 48FS-1d | 448d | 0d | start no earlier than 2019-06-01 |
| 50 | 1.1.4.3 | 承台加固回填土 | 4d | 2019-06-03 | 2019-06-06 | 49FS-1d | 448d | 0d | start no earlier than 2019-06-02 |
| 51 | 1.1.4.4 | 防水施工 | 2d | 2019-06-07 | 2019-06-08 | 50 | 448d | 0d |  |
| 52 | 1.1.4.5 | 保护层施工 | 1d | 2019-06-09 | 2019-06-09 | 51 | 448d | 0d |  |
| 53 | 1.1.4.6 | 筏板施工 | 15d | 2019-06-10 | 2019-06-24 | 52 | 448d |  |  |
| 54 | 1.1.4.7 | 水平支撑拆除 | 3d | 2019-07-07 | 2019-07-09 | 78FS+7d | 403d | 0d | start no earlier than 2019-06-13 |
| 55 | 1.1.4.8 | 负一层结构施工 | 10d | 2019-07-10 | 2019-07-19 | 54 | 403d | 0d |  |
| 56 | 1.1.4.9 | 9区土方开挖 | 5d | 2019-05-30 | 2019-06-03 |  | 350d | 0d | start no earlier than 2019-05-30 |
| 57 | 1.1.4.10 | 垫层浇筑 | 3d | 2019-06-03 | 2019-06-05 | 56FS-1d | 350d | 0d | start no earlier than 2019-06-03 |
| 58 | 1.1.4.11 | 承台加固回填土 | 4d | 2019-06-05 | 2019-06-08 | 57FS-1d | 350d | 0d |  |
| 59 | 1.1.4.12 | 防水施工 | 2d | 2019-06-09 | 2019-06-10 | 58 | 350d | 0d | start no earlier than 2019-05-10 |
| 60 | 1.1.4.13 | 保护层施工 | 1d | 2019-06-11 | 2019-06-11 | 59 | 350d | 0d | start no earlier than 2019-05-13 |
| 61 | 1.1.4.14 | 筏板施工 | 15d | 2019-06-12 | 2019-06-26 | 60 | 350d | 0d | start no earlier than 2019-05-14 |
| 62 | 1.1.4.15 | 水平支撑拆除 | 3d | 2019-07-07 | 2019-07-09 | 78FS+7d | 423d | 0d | start no earlier than 2019-06-12 |
| 63 | 1.1.4.16 | 负一层结构施工 | 10d | 2019-07-10 | 2019-07-19 | 62 | 423d |  |  |

| ID | WBS | Task | Duration | Start | Finish | Predecessors | Total slack | Free slack | Constraint |
| --- | --- | --- | --- | --- | --- | --- | --- | --- | --- |
| 64 | 1.1.5 | **11区、10区** | 76d | 2019-05-27 | 2019-08-10 |  | 267d |  |  |
| 65 | 1.1.5.1 | 11区土方开挖 | 8d | 2019-05-27 | 2019-06-03 |  | 445d | 0d | start no earlier than 2019-05-27 |
| 66 | 1.1.5.2 | 垫层浇筑 | 3d | 2019-06-03 | 2019-06-05 | 65FS-1d | 445d | 0d | start no earlier than 2019-05-22 |
| 67 | 1.1.5.3 | 承台加固回填土 | 4d | 2019-06-05 | 2019-06-08 | 66FS-1d | 445d | 0d |  |
| 68 | 1.1.5.4 | 防水施工 | 3d | 2019-06-09 | 2019-06-11 | 67 | 445d | 0d |  |
| 69 | 1.1.5.5 | 保护层施工 | 1d | 2019-06-12 | 2019-06-12 | 68 | 445d | 0d |  |
| 70 | 1.1.5.6 | 筏板施工 | 15d | 2019-06-13 | 2019-06-27 | 69 | 445d |  |  |
| 71 | 1.1.5.7 | 水平支撑拆除 | 4d | 2019-07-07 | 2019-07-10 | 78FS+7d | 420d | 18d |  |
| 72 | 1.1.5.8 | 负一层结构施工 | 12d | 2019-07-29 | 2019-08-09 | 71, 38FS+10d | 402d |  | start no earlier than 2019-07-10 |
| 73 | 1.1.5.9 | 10区土方开挖 | 5d | 2019-06-02 | 2019-06-06 |  | 261d | 0d | start no earlier than 2019-06-02 |
| 74 | 1.1.5.10 | 垫层浇筑 | 2d | 2019-06-06 | 2019-06-07 | 73FS-1d | 261d | 0d | start no earlier than 2019-05-26 |
| 75 | 1.1.5.11 | 承台加固回填土 | 4d | 2019-06-07 | 2019-06-10 | 74FS-1d | 261d | 0d |  |
| 76 | 1.1.5.12 | 防水施工 | 3d | 2019-06-11 | 2019-06-13 | 75 | 261d | 0d |  |
| 77 | 1.1.5.13 | 保护层施工 | 1d | 2019-06-14 | 2019-06-14 | 76 | 261d | 0d |  |
| 78 | 1.1.5.14 | 筏板施工 | 15d | 2019-06-15 | 2019-06-29 | 77 | 261d | 0d |  |
| 79 | 1.1.5.15 | 水平支撑拆除 | 4d | 2019-07-07 | 2019-07-10 | 78FS+7d | 261d | 19d | start no earlier than 2019-06-16 |
| 80 | 1.1.5.16 | 负一层结构施工 | 12d | 2019-07-30 | 2019-08-10 | 79, 46FS+10d | 242d | 0d | start no earlier than 2019-07-10 |
| 81 | 1.1.6 | **3区、4区、5区** | 48d | 2019-06-21 | 2019-08-07 |  | 349d |  |  |
| 82 | 1.1.6.1 | 3区、4区土方开挖 | 3d | 2019-06-21 | 2019-06-23 | 44 | 349d | 0d | start no earlier than 2019-06-11 |
| 83 | 1.1.6.2 | 垫层浇筑 | 2d | 2019-06-23 | 2019-06-24 | 82FS-1d | 429d | 0d | start no earlier than 2019-05-25 |
| 84 | 1.1.6.3 | 防水施工 | 3d | 2019-06-25 | 2019-06-27 | 83 | 429d | 0d |  |
| 85 | 1.1.6.4 | 保护层施工 | 1d | 2019-06-28 | 2019-06-28 | 84 | 429d | 0d |  |
| 86 | 1.1.6.5 | 筏板施工 | 15d | 2019-06-29 | 2019-07-13 | 85 | 429d |  |  |
| 87 | 1.1.6.6 | 水平支撑拆除 | 3d | 2019-07-24 | 2019-07-26 | 93FS+7d | 416d |  | start no earlier than 2019-06-25 |
| 88 | 1.1.6.7 | 负一层结构施工 | 12d | 2019-07-27 | 2019-08-07 | 94, 20FS+10d | 349d | 0d | start no earlier than 2019-07-14 |
| 89 | 1.1.6.8 | 5区土方开挖 | 3d | 2019-06-24 | 2019-06-26 | 82 | 349d | 0d |  |
| 90 | 1.1.6.9 | 垫层浇筑 | 2d | 2019-06-26 | 2019-06-27 | 89FS-1d | 349d | 0d | start no earlier than 2019-05-29 |
| 91 | 1.1.6.10 | 防水施工 | 3d | 2019-06-28 | 2019-06-30 | 90 | 349d | 0d |  |
| 92 | 1.1.6.11 | 保护层施工 | 1d | 2019-07-01 | 2019-07-01 | 91 | 349d | 0d |  |
| 93 | 1.1.6.12 | 筏板施工 | 15d | 2019-07-02 | 2019-07-16 | 92 | 349d | 0d |  |
| 94 | 1.1.6.13 | 水平支撑拆除 | 3d | 2019-07-24 | 2019-07-26 | 93FS+7d | 349d | 0d | start no earlier than 2019-06-25 |
| 95 | 1.1.6.14 | 负一层结构施工 | 12d | 2019-07-27 | 2019-08-07 | 94, 28FS+10d | 349d | 0d | start no earlier than 2019-07-07 |

| ID | WBS | Task | Duration | Start | Finish | Predecessors | Total slack | Free slack | Constraint |
| --- | --- | --- | --- | --- | --- | --- | --- | --- | --- |
| 96 | 1.2 | **主体施工** | 125d | 2019-07-16 | 2019-11-17 |  | 254d |  |  |
| 97 | 1.2.1 | **1#商业** | 99d | 2019-08-11 | 2019-11-17 |  | 242d |  |  |
| 98 | 1.2.1.1 | **首层结构** | 21d | 2019-08-11 | 2019-08-31 |  | 242d |  |  |
| 99 | 1.2.1.1.1 | 首层柱钢筋绑扎 | 2d | 2019-08-11 | 2019-08-12 | 80 | 242d | 0d | start no earlier than 2019-07-22 |
| 100 | 1.2.1.1.2 | 支撑架搭设 | 5d | 2019-08-13 | 2019-08-17 | 99 | 242d | 0d | start no earlier than 2019-07-02 |
| 101 | 1.2.1.1.3 | PC梁板吊装 | 8d | 2019-08-18 | 2019-08-25 | 100 | 242d | 0d | start no earlier than 2019-07-06 |
| 102 | 1.2.1.1.4 | 板钢筋绑扎 | 4d | 2019-08-26 | 2019-08-29 | 101 | 242d | 0d | start no earlier than 2019-08-05 |
| 103 | 1.2.1.1.5 | 混凝土浇筑 | 2d | 2019-08-30 | 2019-08-31 | 102 | 242d | 0d | start no earlier than 2019-07-19 |
| 104 | 1.2.1.2 | **二层结构** | 19d | 2019-09-01 | 2019-09-19 |  | 242d |  |  |
| 105 | 1.2.1.2.1 | 支撑架搭设 | 5d | 2019-09-01 | 2019-09-05 | 103 | 242d | 0d | start no earlier than 2019-08-04 |
| 106 | 1.2.1.2.2 | PC梁板吊装 | 8d | 2019-09-06 | 2019-09-13 | 105 | 242d | 0d |  |
| 107 | 1.2.1.2.3 | 板钢筋绑扎 | 4d | 2019-09-14 | 2019-09-17 | 106 | 242d | 0d |  |
| 108 | 1.2.1.2.4 | 混凝土浇筑 | 2d | 2019-09-18 | 2019-09-19 | 107 | 242d | 0d |  |
| 109 | 1.2.1.3 | **三层结构** | 19d | 2019-09-20 | 2019-10-08 |  | 242d |  |  |
| 110 | 1.2.1.3.1 | 支撑架搭设 | 5d | 2019-09-20 | 2019-09-24 | 108 | 242d | 0d |  |
| 111 | 1.2.1.3.2 | PC梁板吊装 | 8d | 2019-09-25 | 2019-10-02 | 110 | 242d | 0d |  |
| 112 | 1.2.1.3.3 | 板钢筋绑扎 | 4d | 2019-10-03 | 2019-10-06 | 111 | 242d | 0d |  |
| 113 | 1.2.1.3.4 | 混凝土浇筑 | 2d | 2019-10-07 | 2019-10-08 | 112 | 242d | 0d |  |
| 114 | 1.2.1.4 | **四层结构** | 21d | 2019-10-09 | 2019-10-29 |  | 292d |  |  |
| 115 | 1.2.1.4.1 | 支撑架搭设 | 8d | 2019-10-09 | 2019-10-16 | 113 | 292d | 0d |  |
| 116 | 1.2.1.4.2 | PC梁板吊装 | 8d | 2019-10-17 | 2019-10-24 | 115 | 292d | 0d |  |
| 117 | 1.2.1.4.3 | 板钢筋绑扎 | 3d | 2019-10-25 | 2019-10-27 | 116 | 292d | 0d |  |
| 118 | 1.2.1.4.4 | 混凝土浇筑 | 2d | 2019-10-28 | 2019-10-29 | 117 | 292d | 0d |  |
| 119 | 1.2.1.5 | **五层结构** | 19d | 2019-10-30 | 2019-11-17 |  | 292d |  |  |
| 120 | 1.2.1.5.1 | 支撑架搭设 | 5d | 2019-10-30 | 2019-11-03 | 118 | 292d | 0d |  |
| 121 | 1.2.1.5.2 | PC梁板吊装 | 8d | 2019-11-04 | 2019-11-11 | 120 | 292d | 0d |  |
| 122 | 1.2.1.5.3 | 板钢筋绑扎 | 4d | 2019-11-12 | 2019-11-15 | 121 | 292d | 0d |  |
| 123 | 1.2.1.5.4 | 混凝土浇筑 | 2d | 2019-11-16 | 2019-11-17 | 122 | 292d | 0d |  |

| ID | WBS | Task | Duration | Start | Finish | Predecessors | Total slack | Free slack | Constraint |
| --- | --- | --- | --- | --- | --- | --- | --- | --- | --- |
| 124 | 1.2.2 | **2#商业** | 44d | 2019-08-08 | 2019-09-20 |  | 349d |  |  |
| 125 | 1.2.2.1 | 首层 | 9d | 2019-08-08 | 2019-08-16 | 88 | 349d | 0d | start no earlier than 2019-07-05 |
| 126 | 1.2.2.2 | 二层 | 9d | 2019-08-17 | 2019-08-25 | 125 | 349d | 0d |  |
| 127 | 1.2.2.3 | 三层 | 9d | 2019-08-26 | 2019-09-03 | 126 | 349d | 0d |  |
| 128 | 1.2.2.4 | 四层 | 8d | 2019-09-04 | 2019-09-11 | 127 | 349d | 0d |  |
| 129 | 1.2.2.5 | 五层 | 9d | 2019-09-12 | 2019-09-20 | 128 | 360d |  |  |
| 130 | 1.2.3 | **3#商业** | 63d | 2019-07-20 | 2019-09-20 |  | 250d |  |  |
| 131 | 1.2.3.1 | 首层 | 13d | 2019-07-20 | 2019-08-01 | 46 | 250d | 0d | start no earlier than 2019-07-05 |
| 132 | 1.2.3.2 | 二层 | 13d | 2019-08-02 | 2019-08-14 | 131 | 250d | 0d |  |
| 133 | 1.2.3.3 | 三层 | 13d | 2019-08-15 | 2019-08-27 | 132 | 250d | 0d |  |
| 134 | 1.2.3.4 | 四层 | 11d | 2019-08-28 | 2019-09-07 | 133 | 250d | 0d |  |
| 135 | 1.2.3.5 | 五层 | 13d | 2019-09-08 | 2019-09-20 | 134 | 250d | 0d |  |
| 136 | 1.2.4 | **4#商业** | 44d | 2019-08-08 | 2019-09-20 |  | 350d |  |  |
| 137 | 1.2.4.1 | 首层 | 15d | 2019-08-08 | 2019-08-22 | 88 | 350d | 0d | start no earlier than 2019-07-05 |
| 138 | 1.2.4.2 | 二层 | 15d | 2019-08-23 | 2019-09-06 | 137 | 350d | 0d |  |
| 139 | 1.2.4.3 | 3层 | 14d | 2019-09-07 | 2019-09-20 | 138 | 350d | 0d |  |
| 140 | 1.2.5 | **5#商业** | 45d | 2019-08-08 | 2019-09-21 |  | 349d |  |  |
| 141 | 1.2.5.1 | 首层 | 15d | 2019-08-08 | 2019-08-22 | 88 | 349d | 0d | start no earlier than 2019-07-05 |
| 142 | 1.2.5.2 | 二层 | 15d | 2019-08-23 | 2019-09-06 | 141 | 349d | 0d |  |
| 143 | 1.2.5.3 | 3层 | 15d | 2019-09-07 | 2019-09-21 | 142 | 349d | 0d |  |
| 144 | 1.2.6 | **6#商业** | 45d | 2019-08-08 | 2019-09-21 |  | 349d |  |  |
| 145 | 1.2.6.1 | 首层 | 15d | 2019-08-08 | 2019-08-22 | 95, 88 | 349d | 0d |  |
| 146 | 1.2.6.2 | 二层 | 15d | 2019-08-23 | 2019-09-06 | 145 | 349d | 0d |  |
| 147 | 1.2.6.3 | 3层 | 15d | 2019-09-07 | 2019-09-21 | 146 | 349d | 0d |  |

| ID | WBS | Task | Duration | Start | Finish | Predecessors | Total slack | Free slack | Constraint |
| --- | --- | --- | --- | --- | --- | --- | --- | --- | --- |
| 148 | 1.2.7 | **7#商业** | 36d | 2019-08-08 | 2019-09-12 |  | 358d |  |  |
| 149 | 1.2.7.1 | 首层 | 12d | 2019-08-08 | 2019-08-19 | 95 | 358d | 0d |  |
| 150 | 1.2.7.2 | 二层 | 12d | 2019-08-20 | 2019-08-31 | 149 | 358d | 0d |  |
| 151 | 1.2.7.3 | 3层 | 12d | 2019-09-01 | 2019-09-12 | 150 | 358d | 0d |  |
| 152 | 1.2.8 | **8#楼** | 24d | 2019-07-16 | 2019-08-08 |  | 350d |  |  |
| 153 | 1.2.8.1 | 首层 | 8d | 2019-07-16 | 2019-07-23 | 28 | 350d | 0d |  |
| 154 | 1.2.8.2 | 二层 | 8d | 2019-07-24 | 2019-07-31 | 153 | 350d | 0d |  |
| 155 | 1.2.8.3 | 三层 | 8d | 2019-08-01 | 2019-08-08 | 154 | 350d | 0d |  |
| 156 | 1.2.9 | **9#商业** | 45d | 2019-08-08 | 2019-09-21 |  | 349d |  |  |
| 157 | 1.2.9.1 | 首层 | 15d | 2019-08-08 | 2019-08-22 | 95 | 349d | 0d |  |
| 158 | 1.2.9.2 | 二层 | 15d | 2019-08-23 | 2019-09-06 | 157 | 349d | 0d |  |
| 159 | 1.2.9.3 | 3层 | 15d | 2019-09-07 | 2019-09-21 | 158 | 349d | 0d |  |
| 160 | 1.2.10 | **10#配电房** | 15d | 2019-07-20 | 2019-08-03 |  | 403d |  |  |
| 161 | 1.2.10.1 | 首层 | 15d | 2019-07-20 | 2019-08-03 | 55 | 403d | 0d | start no earlier than 2019-07-12 |
| 162 | 1.2.11 | **12#连廊** | 45d | 2019-08-09 | 2019-09-22 |  | 358d |  |  |
| 163 | 1.2.11.1 | 首层 | 15d | 2019-08-09 | 2019-08-23 |  | 358d | 0d | start no earlier than 2019-08-09 |
| 164 | 1.2.11.2 | 二层 | 15d | 2019-08-24 | 2019-09-07 | 163 | 358d | 0d |  |
| 165 | 1.2.11.3 | 3层 | 15d | 2019-09-08 | 2019-09-22 | 164 | 358d |  |  |
| 166 | 1.3 | 塔吊拆除 | 10d | 2019-11-18 | 2019-11-27 | 123 | 292d |  |  |
| 167 | 1.4 | **二次结构施工** | 111d | 2019-08-04 | 2019-11-22 |  | 293d |  |  |
| 168 | 1.4.1 | 1#商业1-5层 | 30d | 2019-10-24 | 2019-11-22 | 113FS+15d | 242d | 0d |  |
| 169 | 1.4.2 | 2#商业1-5层 | 20d | 2019-09-12 | 2019-10-01 | 127, 128 | 349d |  |  |
| 170 | 1.4.3 | 3#商业1-5层 | 20d | 2019-09-16 | 2019-10-05 | 135FS-5d | 250d | 0d |  |
| 171 | 1.4.4 | 4#商业1-3层 | 10d | 2019-09-21 | 2019-09-30 | 139 | 350d |  |  |
| 172 | 1.4.5 | 5#商业1-3层 | 10d | 2019-09-22 | 2019-10-01 | 143 | 349d |  |  |
| 173 | 1.4.6 | 6#商业1-3层 | 10d | 2019-09-22 | 2019-10-01 | 147 | 349d |  |  |
| 174 | 1.4.7 | 7#商业1-3层 | 10d | 2019-09-13 | 2019-09-22 | 151 | 358d |  |  |
| 175 | 1.4.8 | 8#商业1-3层 | 10d | 2019-08-09 | 2019-08-18 | 155 | 350d | 0d |  |
| 176 | 1.4.9 | 9#商业1-3层 | 10d | 2019-09-22 | 2019-10-01 | 159 | 349d |  |  |
| 177 | 1.4.10 | 10#配电房1层 | 5d | 2019-08-04 | 2019-08-08 | 161 | 403d |  |  |
| 178 | 1.4.11 | 11#地下室 | 52d | 2019-08-05 | 2019-09-25 |  | 355d |  | start no earlier than 2019-08-05 |
| 179 | 1.5 | 结构验收（2-9#楼） | 5d | 2019-10-06 | 2019-10-10 | 170 | 250d | 0d |  |
| 180 | 1.6 | 结构验收（1#楼） | 5d | 2019-11-23 | 2019-11-27 | 168 | 242d | 0d |  |

| ID | WBS | Task | Duration | Start | Finish | Predecessors | Total slack | Free slack | Constraint |
| --- | --- | --- | --- | --- | --- | --- | --- | --- | --- |
| 181 | 1.7 | **粗装修施工** | 143d | 2019-08-19 | 2020-01-08 |  | 250d |  |  |
| 182 | 1.7.1 | **墙面粉刷** | 131d | 2019-08-19 | 2019-12-27 |  | 252d |  |  |
| 183 | 1.7.1.1 | 1#商业 | 30d | 2019-11-28 | 2019-12-27 | 180 | 252d | 0d |  |
| 184 | 1.7.1.2 | 2#商业 | 20d | 2019-10-11 | 2019-10-30 | 179 | 300d | 0d |  |
| 185 | 1.7.1.3 | 3#商业 | 20d | 2019-10-11 | 2019-10-30 | 179 | 300d | 0d |  |
| 186 | 1.7.1.4 | 4#商业 | 10d | 2019-10-11 | 2019-10-20 | 179 | 280d | 0d |  |
| 187 | 1.7.1.5 | 5#商业 | 10d | 2019-10-21 | 2019-10-30 | 186 | 280d | 0d |  |
| 188 | 1.7.1.6 | 6#商业 | 10d | 2019-10-31 | 2019-11-09 | 187 | 280d | 0d |  |
| 189 | 1.7.1.7 | 7#商业 | 10d | 2019-11-10 | 2019-11-19 | 188 | 280d | 0d |  |
| 190 | 1.7.1.8 | 8#商业 | 10d | 2019-08-19 | 2019-08-28 | 175 | 350d | 0d |  |
| 191 | 1.7.1.9 | 9#商业 | 10d | 2019-11-20 | 2019-11-29 | 189 | 280d | 0d |  |
| 192 | 1.7.1.10 | 10#配电房 | 5d | 2019-10-31 | 2019-11-04 | 184 | 305d | 0d |  |
| 193 | 1.7.1.11 | 11#地下室 | 30d | 2019-10-11 | 2019-11-09 | 179 | 250d | 0d | start no earlier than 2019-08-20 |
| 194 | 1.7.2 | **地面施工** | 126d | 2019-08-29 | 2020-01-01 |  | 255d |  |  |
| 195 | 1.7.2.1 | 1#商业 | 15d | 2019-12-18 | 2020-01-01 | 183FS-10d | 252d | 0d |  |
| 196 | 1.7.2.2 | 2#商业 | 10d | 2019-10-31 | 2019-11-09 | 184 | 305d | 0d |  |
| 197 | 1.7.2.3 | 3#商业 | 10d | 2019-10-31 | 2019-11-09 | 185 | 305d | 0d |  |
| 198 | 1.7.2.4 | 4#商业 | 5d | 2019-10-21 | 2019-10-25 | 186 | 322d | 0d |  |
| 199 | 1.7.2.5 | 5#商业 | 5d | 2019-10-31 | 2019-11-04 | 187 | 312d | 0d |  |
| 200 | 1.7.2.6 | 6#商业 | 5d | 2019-11-10 | 2019-11-14 | 188 | 302d | 0d |  |
| 201 | 1.7.2.7 | 7#商业 | 5d | 2019-11-20 | 2019-11-24 | 189 | 292d | 0d |  |
| 202 | 1.7.2.8 | 8#商业 | 5d | 2019-08-29 | 2019-09-02 | 190 | 350d | 0d |  |
| 203 | 1.7.2.9 | 9#商业 | 5d | 2019-11-30 | 2019-12-04 | 191 | 282d | 0d |  |
| 204 | 1.7.2.10 | 10#配电房 | 3d | 2019-11-05 | 2019-11-07 | 192 | 310d | 0d |  |
| 205 | 1.7.2.11 | 11#地下室 | 30d | 2019-11-10 | 2019-12-09 | 193 | 250d | 0d |  |

| ID | WBS | Task | Duration | Start | Finish | Predecessors | Total slack | Free slack |
| --- | --- | --- | --- | --- | --- | --- | --- | --- |
| 206 | 1.7.3 | **顶棚施工** | 128d | 2019-09-03 | 2020-01-08 |  | 250d |  |
| 207 | 1.7.3.1 | 1#商业 | 5d | 2020-01-02 | 2020-01-06 | 195 | 252d |  |
| 208 | 1.7.3.2 | 2#商业 | 5d | 2019-11-10 | 2019-11-14 | 196 | 305d |  |
| 209 | 1.7.3.3 | 3#商业 | 5d | 2019-11-10 | 2019-11-14 | 197 | 305d |  |
| 210 | 1.7.3.4 | 4#商业 | 3d | 2019-10-26 | 2019-10-28 | 198 | 322d |  |
| 211 | 1.7.3.5 | 5#商业 | 3d | 2019-11-05 | 2019-11-07 | 199 | 312d |  |
| 212 | 1.7.3.6 | 6#商业 | 3d | 2019-11-15 | 2019-11-17 | 200 | 302d |  |
| 213 | 1.7.3.7 | 7#商业 | 3d | 2019-11-25 | 2019-11-27 | 201 | 292d |  |
| 214 | 1.7.3.8 | 8#商业 | 3d | 2019-09-03 | 2019-09-05 | 202 | 350d | 0d |
| 215 | 1.7.3.9 | 9#商业 | 3d | 2019-12-05 | 2019-12-07 | 203 | 282d |  |
| 216 | 1.7.3.10 | 10#配电房 | 2d | 2019-11-08 | 2019-11-09 | 204 | 310d |  |
| 217 | 1.7.3.11 | 11#地下室 | 30d | 2019-12-10 | 2020-01-08 | 205 | 250d |  |
| 218 | 1.8 | **屋面施工** | 126d | 2019-08-29 | 2020-01-01 |  | 257d |  |
| 219 | 1.8.1 | 1#商业 | 20d | 2019-12-13 | 2020-01-01 | 183FS-15d | 257d |  |
| 220 | 1.8.2 | 2#商业 | 20d | 2019-10-31 | 2019-11-19 | 184 | 300d |  |
| 221 | 1.8.3 | 3#商业 | 20d | 2019-10-31 | 2019-11-19 | 185 | 300d |  |
| 222 | 1.8.4 | 4#商业 | 10d | 2019-10-21 | 2019-10-30 | 186 | 320d |  |
| 223 | 1.8.5 | 5#商业 | 10d | 2019-10-31 | 2019-11-09 | 187 | 310d |  |
| 224 | 1.8.6 | 6#商业 | 10d | 2019-11-10 | 2019-11-19 | 188 | 300d |  |
| 225 | 1.8.7 | 7#商业 | 10d | 2019-11-20 | 2019-11-29 | 189 | 290d |  |
| 226 | 1.8.8 | 8#商业 | 10d | 2019-08-29 | 2019-09-07 | 190 | 373d |  |
| 227 | 1.8.9 | 9#商业 | 10d | 2019-11-30 | 2019-12-09 | 191 | 280d |  |
| 228 | 1.8.10 | 10#配电房 | 10d | 2019-11-05 | 2019-11-14 | 192 | 305d |  |
| 229 | 1.9 | **外墙施工** | 131d | 2019-08-19 | 2019-12-27 |  | 262d |  |
| 230 | 1.9.1 | 1#商业 | 30d | 2019-11-28 | 2019-12-27 | 180 | 242d | 0d |
| 231 | 1.9.2 | 2#商业 | 30d | 2019-10-11 | 2019-11-09 | 179 | 310d |  |
| 232 | 1.9.3 | 3#商业 | 30d | 2019-10-11 | 2019-11-09 | 179 | 300d | 0d |
| 233 | 1.9.4 | 4#商业 | 15d | 2019-10-11 | 2019-10-25 | 179 | 265d | 0d |
| 234 | 1.9.5 | 5#商业 | 15d | 2019-10-26 | 2019-11-09 | 233 | 265d | 0d |
| 235 | 1.9.6 | 6#商业 | 15d | 2019-11-10 | 2019-11-24 | 234 | 265d | 0d |
| 236 | 1.9.7 | 7#商业 | 15d | 2019-11-25 | 2019-12-09 | 235 | 265d | 0d |
| 237 | 1.9.8 | 8#商业 | 10d | 2019-08-19 | 2019-08-28 | 175 | 383d |  |
| 238 | 1.9.9 | 9#商业 | 15d | 2019-12-10 | 2019-12-24 | 236 | 265d |  |
| 239 | 1.9.10 | 10#配电房 | 10d | 2019-11-10 | 2019-11-19 | 232 | 300d |  |
| 240 | 1.10 | 脚手架拆除 | 20d | 2019-12-28 | 2020-01-16 | 230 | 242d |  |

| ID | WBS | Task | Duration | Start | Finish | Predecessors | Total slack | Free slack | Constraint |
| --- | --- | --- | --- | --- | --- | --- | --- | --- | --- |
| 241 | 1.11 | **室内精装修施工** | 317d | 2019-08-27 | 2020-07-08 |  | 68d |  |  |
| 242 | 1.11.1 | 1#商业 | 60d | 2020-03-01 | 2020-04-29 |  | 88d | 0d | start no earlier than 2020-03-01 |
| 243 | 1.11.2 | 2#商业 | 50d | 2020-04-30 | 2020-06-18 | 242 | 88d |  |  |
| 244 | 1.11.3 | 3#商业 | 50d | 2020-03-01 | 2020-04-19 |  | 0d |  | start no earlier than 2020-03-01 |
| 245 | 1.11.4 | 4#商业 | 40d | 2020-04-20 | 2020-05-29 | 244 | 0d |  |  |
| 246 | 1.11.5 | 5#商业 | 40d | 2020-05-30 | 2020-07-08 | 245 | 0d |  |  |
| 247 | 1.11.6 | 6#商业 | 40d | 2020-03-01 | 2020-04-09 |  | 78d | 0d | start no earlier than 2020-03-01 |
| 248 | 1.11.7 | 7#商业 | 40d | 2020-04-10 | 2020-05-19 | 247 | 78d | 0d |  |
| 249 | 1.11.8 | 8#商业 | 35d | 2019-08-27 | 2019-09-30 | 214FS-10d | 350d |  |  |
| 250 | 1.11.9 | 9#商业 | 40d | 2020-05-20 | 2020-06-28 | 248 | 78d |  |  |
| 251 | 1.12 | 室内电梯安装调试 | 70d | 2019-10-21 | 2019-12-29 | 179FS+10d | 250d | 0d | start no earlier than 2019-06-11 |
| 252 | 1.13 | 室外电梯拆除 | 10d | 2019-12-30 | 2020-01-08 | 251 | 250d |  |  |
| 253 | 1.14 | **室外工程施工** | 333d | 2019-08-08 | 2020-07-05 |  | 71d |  |  |
| 254 | 1.14.1 | 车库顶板防水施工 | 20d | 2019-08-08 | 2019-08-27 | 95 | 374d | 0d |  |
| 255 | 1.14.2 | 车库顶板防水保护层施工 | 10d | 2019-08-28 | 2019-09-06 | 254 | 374d |  |  |
| 256 | 1.14.3 | 车库顶板回填土 | 25d | 2020-03-25 | 2020-04-18 |  | 71d | 0d | start no earlier than 2020-03-25 |
| 257 | 1.14.4 | 室外管网施工 | 25d | 2020-04-19 | 2020-05-13 | 256 | 71d | 0d |  |
| 258 | 1.14.5 | 室外道路施工 | 25d | 2020-05-14 | 2020-06-07 | 257 | 71d | 0d |  |
| 259 | 1.14.6 | 室外园林绿化施工 | 28d | 2020-06-08 | 2020-07-05 | 258 | 71d |  |  |
| 260 | 1.15 | 竣工验收 | 11d | 2020-07-06 | 2020-07-20 | 246FS-3d | 0d |  |  |
| 261 | 1.16 | 竣工备案 | 60d | 2020-07-21 | 2020-10-12 | 260 | 0d |  |  |
